Schedule from MS Project XML, 2013-04-04 to 2013-06-07.

## Calendars

- Standard[Imported]: Mon-Fri 08:00-12:00, 13:00-17:00; Sat-Sun off.

## Resources

| Resource | Group | Rate |
| --- | --- | --- |
| Unassigned |  |  |
| Ruth Eira Jones | Producer | 75 |
| Peter von Stackelberg | Story Architect | 50 |
| Dominic Bellamy | Creative Director | 45 |
| Steve Hodson | Web Design/Development |  |

## Schedule

| ID | WBS | Task | Type | Duration | Start | Finish | Predecessors | Resources |
| --- | --- | --- | --- | --- | --- | --- | --- | --- |
| 1 | 1 | **Initiate transmedia project** |  | 13.5d | 2013-04-04 | 2013-04-23 |  |  |
| 2 | 1.1 | Identify project leadership team |  | 2d | 2013-04-04 | 2013-04-05 |  | Ruth Eira Jones |
| 3 | 1.2 | Create transmedia project concept |  | 1d | 2013-04-08 | 2013-04-08 | 2 | Peter von Stackelberg; Ruth Eira Jones |
| 4 | 1.3 | Identify purpose of project |  | 0.5d | 2013-04-09 | 2013-04-09 | 3 | Peter von Stackelberg; Ruth Eira Jones |
| 5 | 1.4 | Identify user gratifications intended by project author(s) |  | 0.5d | 2013-04-09 | 2013-04-09 | 4 | Peter von Stackelberg |
| 6 | 1.5 | Identify audience demographics |  | 5d | 2013-04-10 | 2013-04-16 | 5 | Peter von Stackelberg; Ruth Eira Jones |
| 7 | 1.6 | Identify user gratification expected by audience |  | 0.5d | 2013-04-17 | 2013-04-17 | 6 | Ruth Eira Jones |
| 8 | 1.7 | Identify content consumer type |  | 0.5d | 2013-04-17 | 2013-04-17 | 7 | Ruth Eira Jones |
| 9 | 1.8 | Identify user segments/audience profiles |  | 3d | 2013-04-18 | 2013-04-22 | 8 | Peter von Stackelberg; Ruth Eira Jones |
| 10 | 1.9 | Identify audience media usage |  | 0.5d | 2013-04-23 | 2013-04-23 | 9 | Dominic Bellamy; Peter von Stackelberg; Ruth Eira Jones |
| 11 | 1.10 | Story concept document delivered | milestone | 0d | 2013-04-23 | 2013-04-23 | 10 | Ruth Eira Jones |
| 12 | 2 | **Develop storyworld** |  | 33.25d? | 2013-04-23 | 2013-06-07 |  |  |
| 13 | 2.1 | **Design storyworld level narrative structure** |  | 22.25d | 2013-04-23 | 2013-05-23 |  |  |
| 14 | 2.1.1 | Create storyworld concept |  | 0.5d | 2013-04-23 | 2013-04-23 | 11 | Dominic Bellamy; Peter von Stackelberg; Ruth Eira Jones |
| 15 | 2.1.2 | Create storyworld theme |  | 0.5d | 2013-04-24 | 2013-04-24 | 14 | Peter von Stackelberg; Ruth Eira Jones |
| 16 | 2.1.3 | Identify storyworld genre |  | 0.25d | 2013-04-24 | 2013-04-24 | 15 | Peter von Stackelberg; Ruth Eira Jones |
| 17 | 2.1.4 | Create character types/groups |  | 2d | 2013-04-24 | 2013-04-26 | 16 | Peter von Stackelberg |
| 18 | 2.1.5 | Create characters |  | 4d | 2013-04-26 | 2013-05-02 | 17 | Dominic Bellamy; Peter von Stackelberg |
| 19 | 2.1.6 | Create significant object(s) |  | 3d | 2013-05-02 | 2013-05-07 | 18 | Dominic Bellamy; Peter von Stackelberg |
| 20 | 2.1.7 | Create events |  | 5d | 2013-05-07 | 2013-05-14 | 19 | Peter von Stackelberg |
| 21 | 2.1.8 | Create settings |  | 7d | 2013-05-14 | 2013-05-23 | 20 | Dominic Bellamy; Peter von Stackelberg |
| 22 | 2.1.9 | Storyworld concept documentation delivered | milestone | 0d | 2013-05-23 | 2013-05-23 | 21 | Dominic Bellamy; Peter von Stackelberg |
| 23 | 2.2 | **Design storyworld level audience engagement** |  | 7d? | 2013-05-23 | 2013-06-03 |  |  |
| 24 | 2.2.1 | Determine project type |  | 1d? | 2013-05-23 | 2013-05-24 | 22 | Peter von Stackelberg; Ruth Eira Jones |
| 25 | 2.2.2 | Determine level of audience engagement |  | 1d? | 2013-05-24 | 2013-05-27 | 24 | Peter von Stackelberg; Steve Hodson |
| 26 | 2.2.3 | Determine degree of author control |  | 1d? | 2013-05-27 | 2013-05-28 | 25 |  |
| 27 | 2.2.4 | Determine level of audience control of characters |  | 1d? | 2013-05-28 | 2013-05-29 | 26 |  |
| 28 | 2.2.5 | Determine level of audience control of significant object(s) |  | 1d? | 2013-05-29 | 2013-05-30 | 27 |  |
| 29 | 2.2.6 | Determine level of audience control of events in storyworld |  | 1d? | 2013-05-30 | 2013-05-31 | 28 |  |
| 30 | 2.2.7 | Determine level of audience control of settings in storyworld |  | 1d? | 2013-05-31 | 2013-06-03 | 29 |  |

| ID | WBS | Task | Duration | Start | Finish | Predecessors |
| --- | --- | --- | --- | --- | --- | --- |
| 31 | 2.3 | **Design storyworld level user interaction** | 4d? | 2013-06-03 | 2013-06-07 |  |
| 32 | 2.3.1 | Determine if characters exist in storyworld, real world, or both | 1d? | 2013-06-03 | 2013-06-04 | 30 |
| 33 | 2.3.2 | Determine if significant object(s) exist in storyworld, real world, or both | 1d? | 2013-06-04 | 2013-06-05 | 32 |
| 34 | 2.3.3 | Determine if events exist in storyworld, real world, or both | 1d? | 2013-06-05 | 2013-06-06 | 33 |
| 35 | 2.3.4 | Determine if settings exist in storyworld, real world, or both | 1d | 2013-06-06 | 2013-06-07 | 34 |
